# Medi-Care Project Planning

Schedule from MS Project, 2022-11-14 to 2023-01-25, costs in $, A marks actual dates.

## Calendars

- Standard: Mon-Fri 08:00-12:00, 13:00-17:00; Sat-Sun off.

## Resources

| Resource | Rate | Cost per use |
| --- | --- | --- |
| Software Testing Tools |  |  |
| Hardware Tools | 100 | 500 |
| Software Tools |  |  |
| Sarjat Aziz Rumi | 40 | 20 |
| Mohammad Bin Ab. Jalil | 40 | 20 |
| MD. Mohimenul Islam Talukder | 20 |  |
| MD. Sajidul Islam Khan | 5 |  |

## Schedule

| ID | WBS | Task | Type | Duration | Start | Finish | Predecessors | Complete | Remaining | Baseline start | Baseline finish | Baseline duration | Total slack | Free slack | Constraint | Resources | Work | Actual work | Cost | Baseline cost | Actual cost | Risk Severity | Risk Level(Probability X Impact (1..5))( Text3 ) |
| --- | --- | --- | --- | --- | --- | --- | --- | --- | --- | --- | --- | --- | --- | --- | --- | --- | --- | --- | --- | --- | --- | --- | --- |
| 1 | 1 | **Medi-Care Project** |  | 51.25d | 2022-11-14 08:00 A | 2023-01-24 10:00 |  | 89% | 5.63d | 2022-11-14 08:00 | 2023-01-24 10:00 | 51.25d | 1.12d |  |  |  | 378h | 344.75h | 19,896.67 | 19,896.67 | 18,632.92 |  |  |
| 2 | 1.1 | Start | manual | 1d | 2022-11-14 08:00 | 2022-11-14 17:00 |  |  |  | 2022-11-14 08:00 | 2022-11-14 17:00 | 1d |  |  |  |  |  |  |  |  |  | Low |  |
| 3 | 1.2 | **Exploration Phase** |  | 1.5d | 2022-11-14 08:00 A | 2022-11-15 12:00 A | 2SS | 100% |  | 2022-11-14 08:00 | 2022-11-15 12:00 | 1.5d |  |  |  |  | 8h | 8h | 100 | 100 | 100 |  |  |
| 4 | 1.2.1 | Client Meeting |  | 0.5d | 2022-11-14 08:00 A | 2022-11-14 12:00 A |  | 100% |  | 2022-11-14 08:00 | 2022-11-14 12:00 | 0.5d |  |  | start no earlier than 2022-11-14 08:00 | MD. Mohimenul Islam Talukder | 4h | 4h | 80 | 80 | 80 | Medium |  |
| 5 | 1.2.2 | Regular Update |  | 0.5d | 2022-11-15 08:00 A | 2022-11-15 12:00 A | 4FS+0.5d | 100% |  | 2022-11-15 08:00 | 2022-11-15 12:00 | 0.5d |  |  |  | MD. Sajidul Islam Khan | 4h | 4h | 20 | 20 | 20 | Low |  |
| 6 | 1.3 | **Planning Phase** |  | 2.38d | 2022-11-15 08:00 A | 2022-11-17 11:00 |  | 43% | 1.35d | 2022-11-15 08:00 | 2022-11-17 11:00 | 2.38d | 49d |  |  |  | 9h | 3.75h | 885 | 885 | 703.75 |  |  |
| 7 | 1.3.1 | Stories for next Iteration |  | 0.5d | 2022-11-15 08:00 A | 2022-11-15 12:00 | 4FS+0.5d | 50% | 0.25d | 2022-11-15 08:00 | 2022-11-15 12:00 | 0.5d | 0.09d | 0d | start no earlier than 2022-11-15 08:00 | Sarjat Aziz Rumi [75%] | 3h | 1.5h | 135 | 135 | 75 | Medium |  |
| 8 | 1.3.2 | Priority Set |  | 0.38d | 2022-11-16 08:00 A | 2022-11-16 11:00 | 7FS+0.5d | 25% | 0.28d | 2022-11-16 08:00 | 2022-11-16 11:00 | 0.38d | 0.25d | 0d |  | MD. Sajidul Islam Khan | 3h | 0.75h | 15 | 15 | 3.75 | Low |  |
| 9 | 1.3.3 | Effort Estimation |  | 0.5d | 2022-11-16 16:00 A | 2022-11-17 11:00 | 8FS+0.5d | 50% | 0.25d | 2022-11-16 16:00 | 2022-11-17 11:00 | 0.5d | 0.47d | 0d | start no earlier than 2022-11-15 08:00 | Hardware Tools; Mohammad Bin Ab. Jalil [75%]; Software Tools [0.1%] | 3h | 1.5h | 735 | 735 | 625 | Medium |  |
| 10 | 1.4 | **Iteration to Release Phase** |  | 37.88d | 2022-11-17 16:00 A | 2023-01-10 15:00 |  | 90% | 3.72d | 2022-11-17 16:00 | 2023-01-10 15:00 | 37.88d | 10.62d |  |  |  | 281h | 254h | 14,735 | 14,735 | 13,672.5 |  |  |
| 11 | 1.4.1 | Analysis |  | 0.62d | 2022-11-17 16:00 A | 2022-11-18 12:00 A | 9FS+0.5d | 100% |  | 2022-11-17 16:00 | 2022-11-18 12:00 | 0.62d |  |  | start no earlier than 2022-11-17 08:00 | Hardware Tools; Sarjat Aziz Rumi; Software Tools [0.1%] | 5h | 5h | 820 | 820 | 820 | Medium |  |
| 12 | 1.4.2 | **Design** |  | 29d | 2022-11-18 13:00 A | 2022-12-29 12:00 | 11 | 87% | 3.67d | 2022-11-18 13:00 | 2022-12-29 12:00 | 29d | 18.88d |  |  |  | 214h | 187h | 11,405 | 11,405 | 10,342.5 |  |  |
| 13 | 1.4.2.1 | **Front-End(Hospital)** |  | 5d | 2022-11-18 13:00 A | 2022-11-25 12:00 |  | 77% | 1.16d | 2022-11-18 13:00 | 2022-11-25 12:00 | 5d | 2.5d |  |  |  | 35h | 26h | 3,640 | 3,640 | 3,232.5 |  |  |
| 14 | 1.4.2.1.1 | Create Medi-Care Homepage Design |  | 0.5d | 2022-11-18 13:00 A | 2022-11-18 17:00 A | 11 | 100% |  | 2022-11-18 13:00 | 2022-11-18 17:00 | 0.5d |  |  | start no earlier than 2022-11-11 08:00 | MD. Mohimenul Islam Talukder [50%]; Hardware Tools; Software Tools [0.1%] | 2h | 2h | 640 | 640 | 640 | Low |  |
| 15 | 1.4.2.1.2 | Search Option Design |  | 0.5d | 2022-11-21 08:00 A | 2022-11-21 12:00 A | 14 | 100% |  | 2022-11-21 08:00 | 2022-11-21 12:00 | 0.5d |  |  | start no earlier than 2022-11-18 08:00 | Hardware Tools; Mohammad Bin Ab. Jalil [50%]; Software Tools [0.1%] | 2h | 2h | 690 | 690 | 690 | Medium |  |
| 16 | 1.4.2.1.3 | Login Page Design |  | 0.5d | 2022-11-21 13:00 A | 2022-11-21 17:00 | 15 | 50% | 0.25d | 2022-11-21 13:00 | 2022-11-21 17:00 | 0.5d | 6d |  |  | Hardware Tools; Mohammad Bin Ab. Jalil [25%]; Software Tools [0.1%] | 1h | 0.5h | 645 | 645 | 575 | Medium |  |
| 17 | 1.4.2.1.4 | Hospital Search Page Design |  | 0.5d | 2022-11-18 13:00 A | 2022-11-18 17:00 A |  | 100% |  | 2022-11-18 13:00 | 2022-11-18 17:00 | 0.5d |  |  |  | Hardware Tools; MD. Mohimenul Islam Talukder [25%]; Software Tools [0.1%] | 1h | 1h | 620 | 620 | 620 | Medium | 12 |
| 18 | 1.4.2.1.5 | Suggest Hospital Name Page Design |  | 0.25d | 2022-11-21 08:00 A | 2022-11-21 10:00 A | 17 | 100% |  | 2022-11-21 08:00 | 2022-11-21 10:00 | 0.25d |  |  | start no earlier than 2022-11-19 08:00 | MD. Sajidul Islam Khan | 2h | 2h | 10 | 10 | 10 | Medium | 12 |
| 19 | 1.4.2.1.6 | Criteria to Compare page Design |  | 0.75d | 2022-11-21 10:00 A | 2022-11-21 17:00 A | 18 | 100% |  | 2022-11-21 10:00 | 2022-11-21 17:00 | 0.75d |  |  | start no earlier than 2022-11-21 08:00 | MD. Sajidul Islam Khan [33.3%] | 2h | 2h | 10 | 10 | 10 | Medium |  |
| 20 | 1.4.2.1.7 | Record of Success Page Design |  | 0.25d | 2022-11-22 08:00 A | 2022-11-22 10:00 | 19 | 75% | 0.06d | 2022-11-22 08:00 | 2022-11-22 10:00 | 0.25d | 4.75d | 2.25d | start no earlier than 2022-11-21 08:00 | Mohammad Bin Ab. Jalil; Software Tools [0.1%] | 2h | 1.5h | 100 | 100 | 80 | Medium | 12 |
| 21 | 1.4.2.1.8 | Show Doctor List Page Design |  | 0.75d | 2022-11-22 10:00 A | 2022-11-22 17:00 A | 20 | 100% |  | 2022-11-22 10:00 | 2022-11-22 17:00 | 0.75d |  |  | start no earlier than 2022-11-22 08:00 | Mohammad Bin Ab. Jalil [33.3%]; Software Tools [0.1%] | 2h | 2h | 86.67 | 86.67 | 86.67 | Medium |  |
| 22 | 1.4.2.1.9 | Cabin Selection Page Design |  | 0.25d | 2022-11-23 08:00 A | 2022-11-23 10:00 | 21 | 75% | 0.06d | 2022-11-23 08:00 | 2022-11-23 10:00 | 0.25d | 0.47d | 0d | start no earlier than 2022-11-22 08:00 | Software Tools [0.1%]; MD. Sajidul Islam Khan | 2h | 1.5h | 10 | 10 | 7.5 | Low |  |
| 23 | 1.4.2.1.10 | Patient Information Page Design For Booking |  | 0.75d | 2022-11-23 10:00 A | 2022-11-23 17:00 | 22 | 63% | 0.28d | 2022-11-23 10:00 | 2022-11-23 17:00 | 0.75d | 3d | 0.5d | start no earlier than 2022-11-22 08:00 | Sarjat Aziz Rumi [66.7%]; Software Tools [0.1%] | 4h | 2.5h | 173.33 | 173.33 | 113.33 | Low |  |
| 24 | 1.4.2.1.11 | Show All Information Page Design |  | 0.5d | 2022-11-24 08:00 A | 2022-11-24 12:00 A | 23 | 100% |  | 2022-11-24 08:00 | 2022-11-24 12:00 | 0.5d |  |  | start no earlier than 2022-11-22 08:00 | Mohammad Bin Ab. Jalil; Software Tools [0.1%] | 4h | 4h | 180 | 180 | 180 | Low |  |
| 25 | 1.4.2.1.12 | Payment Information Page Design |  | 0.62d | 2022-11-23 08:00 A | 2022-11-23 14:00 A |  | 100% |  | 2022-11-23 08:00 | 2022-11-23 14:00 | 0.62d |  |  | start no earlier than 2022-11-23 08:00 | Mohammad Bin Ab. Jalil; Software Tools [0.1%] | 5h | 5h | 220 | 220 | 220 | Medium |  |
| 26 | 1.4.2.1.13 | Design all the buttons in Hospital Pages |  | 1d | 2022-11-24 13:00 | 2022-11-25 12:00 | 15, 17, 18, 19, 20, 21, 22, 23, 24, 25 |  |  | 2022-11-24 13:00 | 2022-11-25 12:00 | 1d | 2.5d |  | start no earlier than 2022-11-23 08:00 | Sarjat Aziz Rumi [75%]; Software Tools [0.1%] | 6h |  | 255 | 255 |  | Medium | 10 |

| ID | WBS | Task | Duration | Start | Finish | Predecessors | Complete | Remaining | Actual finish | Baseline start | Baseline finish | Baseline duration | Total slack | Constraint | Resources | Work | Actual work | Cost | Baseline cost | Actual cost | Risk Severity | Risk Level(Probability X Impact (1..5))( Text3 ) |
| --- | --- | --- | --- | --- | --- | --- | --- | --- | --- | --- | --- | --- | --- | --- | --- | --- | --- | --- | --- | --- | --- | --- |
| 27 | 1.4.2.2 | **Front-End(Diagnostic Center)** | 1.62d | 2022-11-25 08:00 A | 2022-11-28 14:00 |  | 74% | 0.43d |  | 2022-11-25 08:00 | 2022-11-28 14:00 | 1.62d | 1.38d |  |  | 16h | 11.5h | 1,205 | 1,205 | 1,090 |  |  |
| 28 | 1.4.2.2.1 | Diagnostic Center Home Page Design | 0.25d | 2022-11-25 08:00 A | 2022-11-25 10:00 |  | 25% | 0.19d |  | 2022-11-25 08:00 | 2022-11-25 10:00 | 0.25d | 2.75d | start no earlier than 2022-11-25 08:00 | Mohammad Bin Ab. Jalil; Software Tools [0.1%] | 2h | 0.5h | 100 | 100 | 40 | Low |  |
| 29 | 1.4.2.2.2 | Diagnostic Center Search Design | 0.25d | 2022-11-25 08:00 A | 2022-11-25 10:00 |  | 50% | 0.12d |  | 2022-11-25 08:00 | 2022-11-25 10:00 | 0.25d | 2.75d | start no earlier than 2022-11-25 08:00 | MD. Sajidul Islam Khan; Software Tools [0.1%] | 2h | 1h | 10 | 10 | 5 | Low |  |
| 30 | 1.4.2.2.3 | Suggest Diagnostic Page Design | 0.25d | 2022-11-25 08:00 A | 2022-11-25 10:00 |  | 25% | 0.19d |  | 2022-11-25 08:00 | 2022-11-25 10:00 | 0.25d | 2.75d | start no earlier than 2022-11-25 08:00 | MD. Mohimenul Islam Talukder; Software Tools [0.1%] | 2h | 0.5h | 40 | 40 | 10 | Medium |  |
| 31 | 1.4.2.2.4 | Criteria to Compare Page Design | 0.25d | 2022-11-25 08:00 A | 2022-11-25 10:00 |  | 75% | 0.06d |  | 2022-11-25 08:00 | 2022-11-25 10:00 | 0.25d | 2.75d | start no earlier than 2022-11-25 08:00 | Mohammad Bin Ab. Jalil; Software Tools [0.1%] | 2h | 1.5h | 100 | 100 | 80 | Medium | 12 |
| 32 | 1.4.2.2.5 | Show List of Diagnostic Center Page | 0.5d | 2022-11-25 10:00 A | 2022-11-25 15:00 A | 31 | 100% |  |  | 2022-11-25 10:00 | 2022-11-25 15:00 | 0.5d |  |  | Hardware Tools; Mohammad Bin Ab. Jalil [75%]; Software Tools [0.1%] | 3h | 3h | 735 | 735 | 735 | Medium |  |
| 33 | 1.4.2.2.6 | Design all the buttons in Diagnostic Center Pages | 0.62d | 2022-11-28 08:00 A | 2022-11-28 14:00 A | 30, 28, 29, 31, 32 | 100% |  |  | 2022-11-28 08:00 | 2022-11-28 14:00 | 0.62d |  | start no earlier than 2022-11-28 08:00 | Sarjat Aziz Rumi; Software Tools [0.1%] | 5h | 5h | 220 | 220 | 220 | Medium |  |
| 34 | 1.4.2.3 | **Front-End(Doctor)** | 2d | 2022-11-28 08:00 A | 2022-11-29 17:00 |  | 100% |  | 2022-11-29 14:00 | 2022-11-28 08:00 | 2022-11-29 14:00 | 1.62d |  |  |  | 13h | 13h | 410 | 410 | 410 |  |  |
| 35 | 1.4.2.3.1 | Doctors Home Page Design | 0.25d | 2022-11-28 08:00 A | 2022-11-28 10:00 A |  | 100% |  |  | 2022-11-28 08:00 | 2022-11-28 10:00 | 0.25d |  | start no earlier than 2022-11-28 08:00 | Sarjat Aziz Rumi; Software Tools [0.1%] | 2h | 2h | 100 | 100 | 100 | Medium | 12 |
| 36 | 1.4.2.3.2 | Search Doctor option Design | 0.25d | 2022-11-28 08:00 A | 2022-11-28 10:00 A |  | 100% |  |  | 2022-11-28 08:00 | 2022-11-28 10:00 | 0.25d |  | start no earlier than 2022-11-28 08:00 | Software Tools [0.1%]; MD. Sajidul Islam Khan | 2h | 2h | 10 | 10 | 10 | Medium | 12 |
| 37 | 1.4.2.3.3 | Select Criteria Page Design | 0.25d | 2022-11-28 08:00 A | 2022-11-28 10:00 A |  | 100% |  |  | 2022-11-28 08:00 | 2022-11-28 10:00 | 0.25d |  | start no earlier than 2022-11-28 08:00 | Mohammad Bin Ab. Jalil; Software Tools [0.1%] | 2h | 2h | 100 | 100 | 100 | Low |  |
| 38 | 1.4.2.3.4 | Criteria Result Page Design | 0.25d | 2022-11-28 08:00 A | 2022-11-28 10:00 A |  | 100% |  |  | 2022-11-28 08:00 | 2022-11-28 10:00 | 0.25d |  | start no earlier than 2022-11-28 08:00 | Mohammad Bin Ab. Jalil; Software Tools [0.1%] | 2h | 2h | 100 | 100 | 100 | Low |  |
| 39 | 1.4.2.3.5 | Design all the button in Doctor Pages | 0.62d | 2022-11-29 08:00 A | 2022-11-29 14:00 A | 35, 36, 37, 38 | 100% |  |  | 2022-11-29 08:00 | 2022-11-29 14:00 | 0.62d |  | start no earlier than 2022-11-29 08:00 | MD. Mohimenul Islam Talukder; Software Tools [0.1%] | 5h | 5h | 100 | 100 | 100 | Medium | 12 |
| 40 | 1.4.2.4 | **Back-End(All)** | 10.5d | 2022-11-30 08:00 A | 2022-12-14 12:00 | 13, 27, 34 | 89% | 1.12d |  | 2022-11-30 08:00 | 2022-12-14 12:00 | 10.5d | 0d |  |  | 84h | 75h | 3,440 | 3,440 | 3,080 |  |  |
| 41 | 1.4.2.4.1 | Back-end Server Create With Express Js | 2.25d | 2022-11-30 08:00 A | 2022-12-02 10:00 A |  | 100% |  |  | 2022-11-30 08:00 | 2022-12-02 10:00 | 2.25d |  | start no earlier than 2022-11-30 08:00 | Mohammad Bin Ab. Jalil; Software Tools [0.1%] | 18h | 18h | 740 | 740 | 740 | High | 20 |
| 42 | 1.4.2.4.2 | Connect Server with MongoDB | 2.25d | 2022-12-02 10:00 A | 2022-12-06 12:00 A | 41 | 100% |  |  | 2022-12-02 10:00 | 2022-12-06 12:00 | 2.25d |  |  | Mohammad Bin Ab. Jalil; Software Tools [0.1%] | 18h | 18h | 740 | 740 | 740 | High | 25 |
| 43 | 1.4.2.4.3 | Database Schema Design With Mongo DB | 2.25d | 2022-12-06 13:00 A | 2022-12-08 15:00 | 42 | 50% | 1.12d |  | 2022-12-06 13:00 | 2022-12-08 15:00 | 2.25d | 3.75d |  | Mohammad Bin Ab. Jalil; Software Tools [0.1%] | 18h | 9h | 740 | 740 | 380 | High | 16 |
| 44 | 1.4.2.4.4 | Database Model Validation | 3.75d | 2022-12-08 15:00 A | 2022-12-14 12:00 A | 43 | 100% |  |  | 2022-12-08 15:00 | 2022-12-14 12:00 | 3.75d |  |  | Sarjat Aziz Rumi; Software Tools [0.1%] | 30h | 30h | 1,220 | 1,220 | 1,220 | High | 25 |
| 45 | 1.4.2.5 | **State Management (Hospital)** | 2.25d | 2022-12-14 13:00 A | 2022-12-16 15:00 | 40 | 75% | 0.56d |  | 2022-12-14 13:00 | 2022-12-16 15:00 | 2.25d | 27.62d |  |  | 18h | 13.5h | 740 | 740 | 560 |  |  |
| 46 | 1.4.2.5.1 | Front-End State Management With Redux Toolkit Query | 2.25d | 2022-12-14 13:00 A | 2022-12-16 15:00 | 44 | 75% | 0.56d |  | 2022-12-14 13:00 | 2022-12-16 15:00 | 2.25d | 27.62d | start no earlier than 2022-12-13 08:00 | Mohammad Bin Ab. Jalil [50%]; Sarjat Aziz Rumi [50%]; Software Tools [0.1%] | 18h | 13.5h | 740 | 740 | 560 | High | 20 |
| 47 | 1.4.2.6 | **State Management (Diagnostic Centerl)** | 2.25d | 2022-12-16 15:00 A | 2022-12-20 17:00 A | 40 | 100% |  |  | 2022-12-16 15:00 | 2022-12-20 17:00 | 2.25d |  |  |  | 18h | 18h | 740 | 740 | 740 |  |  |
| 48 | 1.4.2.6.1 | Front-End State Management With Redux Toolkit Query | 2.25d | 2022-12-16 15:00 A | 2022-12-20 17:00 A | 46 | 100% |  |  | 2022-12-16 15:00 | 2022-12-20 17:00 | 2.25d |  | start no earlier than 2022-12-15 08:00 | Mohammad Bin Ab. Jalil; Software Tools [0.1%] | 18h | 18h | 740 | 740 | 740 | High | 16 |
| 49 | 1.4.2.7 | **State Management (Doctor)** | 2.5d | 2022-12-21 08:00 A | 2022-12-23 12:00 A | 40 | 100% |  |  | 2022-12-21 08:00 | 2022-12-23 12:00 | 2.5d |  |  |  | 10h | 10h | 410 | 410 | 410 |  |  |
| 50 | 1.4.2.7.1 | Front-End State Management With Redux Toolkit Query | 2.5d | 2022-12-21 08:00 A | 2022-12-23 12:00 A | 48 | 100% |  |  | 2022-12-21 08:00 | 2022-12-23 12:00 | 2.5d |  | start no earlier than 2022-12-19 08:00 | Software Tools [0.1%]; Mohammad Bin Ab. Jalil [50%] | 10h | 10h | 410 | 410 | 410 | High | 15 |

| ID | WBS | Task | Duration | Start | Finish | Predecessors | Complete | Remaining | Baseline start | Baseline finish | Baseline duration | Total slack | Constraint | Resources | Work | Actual work | Cost | Baseline cost | Actual cost | Risk Level(Probability X Impact (1..5))( Text3 ) | Risk Severity |
| --- | --- | --- | --- | --- | --- | --- | --- | --- | --- | --- | --- | --- | --- | --- | --- | --- | --- | --- | --- | --- | --- |
| 51 | 1.4.2.8 | **Front-End of Admin Panel** | 4d | 2022-12-23 13:00 A | 2022-12-29 12:00 A | 40 | 100% |  | 2022-12-23 13:00 | 2022-12-29 12:00 | 4d |  |  |  | 20h | 20h | 820 | 820 | 820 |  |  |
| 52 | 1.4.2.8.1 | Stat Page and Control Page Design | 2.5d | 2022-12-23 13:00 A | 2022-12-29 12:00 A | 50 | 100% |  | 2022-12-23 13:00 | 2022-12-29 12:00 | 2.5d |  | start no earlier than 2022-12-21 08:00 | Mohammad Bin Ab. Jalil; Software Tools [0.1%] | 20h | 20h | 820 | 820 | 820 | 20 | High |
| 53 | 1.4.3 | **Testing** | 8.25d | 2022-12-29 13:00 A | 2023-01-10 15:00 A | 12 | 100% |  | 2022-12-29 13:00 | 2023-01-10 15:00 | 8.25d |  |  |  | 62h | 62h | 2,510 | 2,510 | 2,510 |  |  |
| 54 | 1.4.3.1 | Planning For Testing | 1d | 2022-12-29 13:00 A | 2022-12-30 12:00 A | 52 | 100% |  | 2022-12-29 13:00 | 2022-12-30 12:00 | 1d |  | start no earlier than 2022-12-27 08:00 | Sarjat Aziz Rumi [50%] | 4h | 4h | 170 | 170 | 170 | 16 | High |
| 55 | 1.4.3.2 | Testing | 7.25d | 2022-12-30 13:00 A | 2023-01-10 15:00 A | 54 | 100% |  | 2022-12-30 13:00 | 2023-01-10 15:00 | 7.25d |  |  | Sarjat Aziz Rumi; Software Testing Tools [0.1%] | 58h | 58h | 2,340 | 2,340 | 2,340 | 25 | High |
| 56 | 1.5 | **Productionizing Phase** | 2.5d | 2023-01-10 15:00 A | 2023-01-13 10:00 | 53 | 95% | 0.12d | 2023-01-10 15:00 | 2023-01-13 10:00 | 2.5d | 8.12d |  |  | 20h | 19h | 1,340 | 1,340 | 1,320 |  |  |
| 57 | 1.5.1 | Small Release | 2d | 2023-01-10 15:00 A | 2023-01-12 15:00 A | 55 | 100% |  | 2023-01-10 15:00 | 2023-01-12 15:00 | 2d |  | start no earlier than 2023-01-06 08:00 | Hardware Tools; Mohammad Bin Ab. Jalil; Software Tools [0.1%] | 16h | 16h | 1,260 | 1,260 | 1,260 | 16 | High |
| 58 | 1.5.2 | Client Meeting and Feed-Back | 0.5d | 2023-01-12 15:00 A | 2023-01-13 10:00 | 57 | 75% | 0.12d | 2023-01-12 15:00 | 2023-01-13 10:00 | 0.5d | 8.12d | start no earlier than 2023-01-10 08:00 | MD. Mohimenul Islam Talukder | 4h | 3h | 80 | 80 | 60 | 16 | High |
| 59 | 1.6 | **Maintenance Phase** | 3d | 2023-01-13 10:00 A | 2023-01-18 10:00 A | 56 | 100% |  | 2023-01-13 10:00 | 2023-01-18 10:00 | 3d |  |  |  | 28h | 28h | 1,386.67 | 1,386.67 | 1,386.67 |  |  |
| 60 | 1.6.1 | Updated Release | 3d | 2023-01-13 10:00 A | 2023-01-18 10:00 A | 57, 58 | 100% |  | 2023-01-13 10:00 | 2023-01-18 10:00 | 3d |  | start no earlier than 2023-01-10 08:00 | Hardware Tools; Mohammad Bin Ab. Jalil [16.7%]; Software Tools [0.1%]; MD. Sajidul Islam Khan [16.7%]; Sarjat Aziz Rumi [16.7%]; MD. Mohimenul Islam Talukder [50%] | 24h | 24h | 1,186.67 | 1,186.67 | 1,186.67 | 16 | High |
| 61 | 1.6.2 | Client Meeting and Feed-Back | 0.25d | 2023-01-16 08:00 A | 2023-01-16 10:00 A | 58 | 100% |  | 2023-01-16 08:00 | 2023-01-16 10:00 | 0.25d |  | start no earlier than 2023-01-16 08:00 | Mohammad Bin Ab. Jalil; Sarjat Aziz Rumi | 4h | 4h | 200 | 200 | 200 | 10 | Medium |
| 62 | 1.7 | **Death Phase** | 4d | 2023-01-18 10:00 A | 2023-01-24 10:00 A | 59 | 100% |  | 2023-01-18 10:00 | 2023-01-24 10:00 | 4d |  |  |  | 32h | 32h | 1,450 | 1,450 | 1,450 |  |  |
| 63 | 1.7.1 | Final Release | 4d | 2023-01-18 10:00 A | 2023-01-24 10:00 A | 61 | 100% |  | 2023-01-18 10:00 | 2023-01-24 10:00 | 4d |  | start no earlier than 2023-01-16 08:00 | Sarjat Aziz Rumi [25%]; Hardware Tools; MD. Mohimenul Islam Talukder [25%]; MD. Sajidul Islam Khan [25%]; Mohammad Bin Ab. Jalil [25%]; Software Tools [0.1%] | 32h | 32h | 1,450 | 1,450 | 1,450 | 20 | High |
| 64 | 2 | Documentation | 1.12d | 2023-01-24 10:00 A | 2023-01-25 11:00 A | 3, 6, 10, 56, 59, 62 | 100% |  | 2023-01-24 10:00 | 2023-01-25 11:00 | 1.12d |  | start no earlier than 2023-01-20 08:00 | Sarjat Aziz Rumi; Mohammad Bin Ab. Jalil | 18h | 18h | 760 | 760 | 760 | 25 | High |
